# GEN2研发工作任务细化-rev1.0_v2016006

Schedule from MS Project, 2015-08-17 to 2016-07-18, A marks actual dates.
Lenovo

## Calendars

- 标准: Mon-Fri 08:00-12:00, 13:00-17:00; Sat-Sun off. Exceptions (off unless hours are given): 2016-01-01 (11).

## Resources

| Resource |
| --- |
| 王富贵 |
| 胡真瑞 |
| 王海波 |
| 叶亮 |
| 赖秋存 |
| 姚航军 |
| 邱天 |
| 贾晶晶 |
| 胡学涛 |
| 张兴亮 |
| 聂家刚 |
| 王磊 |
| 叶亮1 |
| 张兴亮1 |
| 赖秋存1 |
| 姚航军1 |

## Schedule

| ID | WBS | Task | Type | Duration | Start | Finish | Predecessors | Complete | Remaining | Total slack | Resources | Work | Actual work |
| --- | --- | --- | --- | --- | --- | --- | --- | --- | --- | --- | --- | --- | --- |
| 1 | 1 | **素材列表** |  | 10d | 2016-02-16 A | 2016-02-29 A |  | 100% |  |  | 邱天 | 80h | 80h |
| 2 | 1.1 | 树形菜单，素材显示可调宽度 | manual | 1d | 2016-02-16 A | 2016-02-16 A |  | 100% |  |  |  |  |  |
| 3 | 1.2 | 记住本机位置 | manual | 1d | 2016-02-16 A | 2016-02-16 A |  | 100% |  |  |  |  |  |
| 4 | 2 | 时间线 | manual | 1d | 2016-03-16 A | 2016-03-16 A |  | 100% |  |  | 王海波 | 8h | 8h |
| 5 | 3 | 故事板属性 | milestone, manual | 0d | 2016-05-12 A | 2016-05-13 A | 4 | 100% |  |  | 张兴亮 |  |  |
| 6 | 4 | **Timeline's Tool Bar** |  | 83d | 2016-03-24 A | 2016-07-18 |  | 71% | 24.1d | 0d |  | 248h | 176h |
| 7 | 4.1 | Timeline Duration | manual | 1d | 2016-03-24 A | 2016-03-24 A | 5 | 100% |  |  | 王海波 | 8h | 8h |
| 8 | 4.2 | **Text** |  | 2d | 2016-03-25 A | 2016-03-28 A |  | 100% |  |  |  | 56h | 56h |
| 9 | 4.2.1 | Add Text - Font Type | manual | 1d | 2016-03-25 A | 2016-03-28 A |  | 100% |  |  | 王海波 | 8h | 8h |
| 10 | 4.2.2 | Add Text - Font Style | manual | 1d | 2016-03-25 A | 2016-03-25 A |  | 100% |  |  | 王海波 | 8h | 8h |
| 11 | 4.2.3 | Add Text - Font Size | manual | 1d | 2016-03-25 A | 2016-03-25 A |  | 100% |  |  | 王海波 | 8h | 8h |
| 12 | 4.2.4 | Add Text - Font Color | manual | 1d | 2016-03-25 A | 2016-03-25 A |  | 100% |  |  | 王海波 | 8h | 8h |
| 13 | 4.2.5 | Add Text - Fill Color | manual | 1d | 2016-03-25 A | 2016-03-25 A |  | 100% |  |  | 王海波 | 8h | 8h |
| 14 | 4.2.6 | Add Text - Color Panel | manual | 1d | 2016-03-25 A | 2016-03-25 A |  | 100% |  |  | 王海波 | 8h | 8h |
| 15 | 4.2.7 | Set Title Stamp of Story | manual | 1d | 2016-03-25 A | 2016-03-25 A |  | 100% |  |  | 王海波 | 8h | 8h |
| 16 | 4.3 | Essence Mark | manual | 3d | 2016-05-09 A | 2016-05-11 A | 7 | 100% |  |  | 王海波 | 24h | 24h |
| 17 | 4.4 | Save Story | manual | 2d | 2016-04-04 A | 2016-04-05 A |  | 100% |  |  | 王海波 | 16h | 16h |
| 18 | 4.5 | Save as Clip | manual | 5d | 2016-04-06 A | 2016-04-12 A | 17 | 100% |  |  | 王海波 | 40h | 40h |
| 19 | 4.6 | Save as EDL | manual | 2d | 2016-04-13 A | 2016-04-14 A | 18 | 100% |  |  | 王海波 | 16h | 16h |
| 20 | 4.7 | Register to OA Folder | manual | 3d | 2016-07-11 | 2016-07-13 | 50 |  |  |  | 张兴亮 | 24h |  |
| 21 | 4.8 | Register to EVENT | manual | 3d | 2016-07-14 | 2016-07-18 | 20 |  |  |  | 张兴亮 | 24h |  |
| 22 | 4.9 | Clear Timeline | manual | 1d | 2016-04-20 A | 2016-04-20 A |  | 100% |  |  | 王海波 | 8h | 8h |
| 23 | 4.10 | Timeline Zoom In/Out | manual | 1d | 2016-04-18 A | 2016-04-18 A |  | 100% |  |  | 王海波 | 8h | 8h |
| 24 | 4.11 | 测试 | manual | 3d | 2016-03-24 | 2016-03-28 |  |  |  |  | 胡学涛 | 24h |  |

| ID | WBS | Task | Type | Duration | Start | Finish | Predecessors | Complete | Actual start | Actual finish | Total slack | Free slack | Constraint | Resources | Work | Actual work |
| --- | --- | --- | --- | --- | --- | --- | --- | --- | --- | --- | --- | --- | --- | --- | --- | --- |
| 25 | 5 | **Timeline's Track** |  | 2d | 2016-03-29 A | 2016-03-30 A |  | 100% |  |  |  |  |  |  | 48h | 48h |
| 26 | 5.1 | Text Track | manual | 1d | 2016-03-29 A | 2016-03-29 A |  | 100% |  |  |  |  |  | 王海波 | 8h | 8h |
| 27 | 5.2 | Graphic Track | manual | 1d | 2016-03-29 A | 2016-03-29 A |  | 100% |  |  |  |  |  | 王海波 | 8h | 8h |
| 28 | 5.3 | Video Track | manual | 1d | 2016-03-29 A | 2016-03-29 A |  | 100% |  |  |  |  |  | 王海波 | 8h | 8h |
| 29 | 5.4 | Audio Track x 2 | manual | 1d | 2016-03-29 A | 2016-03-29 A |  | 100% |  |  |  |  |  | 王海波 | 8h | 8h |
| 30 | 5.5 | 测试 | manual | 2d | 2016-03-29 A | 2016-03-30 A | 24 | 100% |  |  |  |  |  | 胡学涛 | 16h | 16h |
| 31 | 6 | **Timeline's Playline** |  | 94d | 2015-09-11 A | 2016-01-21 |  | 100% |  | 2016-05-26 |  |  |  |  | 88h | 88h |
| 32 | 6.1 | Title Stamp Icon | manual | 1d | 2016-02-22 A | 2016-02-22 A |  | 100% |  |  |  |  |  | 王海波 | 8h | 8h |
| 33 | 6.2 | Scene In/Out Mark(设计已经DROP) | manual | 3d | 2016-05-19 A | 2016-05-24 A |  | 100% |  |  |  |  |  | 王海波 | 24h | 24h |
| 34 | 6.3 | Essence Mark Icon | manual | 2d | 2016-05-25 A | 2016-05-26 A | 33 | 100% |  |  |  |  |  | 王海波 | 16h | 16h |
| 35 | 6.4 | Now line | manual | 1d | 2016-02-22 A | 2016-02-22 A |  | 100% |  |  |  |  |  | 王海波 | 8h | 8h |
| 36 | 6.5 | 游标与显示部分合二为一 | manual | 1d | 2015-09-11 A | 2015-09-11 A |  | 100% |  |  |  |  |  |  |  |  |
| 37 | 6.6 | 测试 | manual | 2d | 2016-02-22 A | 2016-02-23 A |  | 100% |  |  |  |  |  | 胡学涛 | 16h | 16h |
| 38 | 6.7 | 字典化 |  | 2d | 2016-04-20 A | 2016-04-21 A |  | 100% |  |  |  |  | start no earlier than 2016-04-20 | 张兴亮 | 16h | 16h |
| 39 | 7 | **Timeline Player** |  | 28d | 2015-09-11 | 2015-10-20 |  | 100% | 2016-04-25 | 2016-06-01 |  |  |  |  | 48h | 48h |
| 40 | 7.1 | 素材预览 | manual | 2d | 2016-04-25 A | 2016-04-26 A |  | 100% |  |  |  |  |  | 张兴亮 | 16h | 16h |
| 41 | 7.2 | 播放器工具条 | manual | 4d | 2016-05-18 A | 2016-06-01 A |  | 100% |  |  |  |  |  | 王海波 | 32h | 32h |
| 42 | 8 | **保存按钮分三个（save,save as ,render）** |  | 1d | 2015-09-11 | 2015-09-11 |  |  |  |  |  |  |  |  | 32h |  |
| 43 | 8.1 | Save as （不允许重名） | manual | 1d | 2016-06-06 | 2016-06-06 | 86 |  |  |  |  |  |  | 张兴亮 | 8h |  |
| 44 | 8.2 | render(EDL不能被查，找NJG确认) |  | 3d | 2016-06-07 | 2016-06-09 | 43 |  |  |  | -193d | 0d |  | 张兴亮 | 24h |  |
| 45 | 9 | **素材成组** |  | 1d? | 2015-09-11 | 2015-09-11 |  |  |  |  |  |  |  |  | 32h |  |
| 46 | 9.1 | 调研 | manual | 2d | 2016-06-29 | 2016-06-30 | 65 |  |  |  |  |  |  | 张兴亮 | 16h |  |
| 47 | 9.2 | 实现 | manual | 2d | 2016-07-01 | 2016-07-04 | 46 |  |  |  |  |  |  | 张兴亮 | 16h |  |
| 48 | 10 | **吸附功能** |  | 1d | 2015-09-11 | 2015-09-11 |  |  |  |  |  |  |  |  | 32h |  |
| 49 | 10.1 | 调研 | manual | 2d | 2016-07-05 | 2016-07-06 | 47 |  |  |  |  |  |  | 张兴亮 | 16h |  |
| 50 | 10.2 | 实现 | manual | 2d | 2016-07-07 | 2016-07-08 | 49 |  |  |  |  |  |  | 张兴亮 | 16h |  |

Notes:
- 29: 后来与设计确认一个音频

| ID | WBS | Task | Type | Duration | Start | Finish | Predecessors | Complete | Remaining | Actual finish | Total slack | Resources | Work | Actual work |
| --- | --- | --- | --- | --- | --- | --- | --- | --- | --- | --- | --- | --- | --- | --- |
| 51 | 11 | **MV/SV切换** |  | 1d | 2016-06-10 A | 2016-06-10 A |  | 100% |  |  |  | 张兴亮 | 8h | 8h |
| 52 | 11.1 | 窗口大小调整 | manual | 1d | 2016-06-10 A | 2016-06-10 A | 44 | 100% |  |  |  | 张兴亮 | 8h | 8h |
| 53 | 12 | **搜索** |  | 1d? | 2015-09-11 | 2015-09-11 |  |  |  |  |  |  | 40h |  |
| 54 | 12.1 | 全文搜索（找叶亮） | manual | 2d | 2016-06-13 | 2016-06-14 | 52 |  |  |  |  | 张兴亮 | 16h |  |
| 55 | 12.2 | 高级搜索 | manual | 2d | 2016-06-15 | 2016-06-16 | 54 |  |  |  |  | 张兴亮 | 16h |  |
| 56 | 12.3 | 显示搜索结果数量 | manual | 1d | 2016-06-17 | 2016-06-17 | 55 |  |  |  |  | 张兴亮 | 8h |  |
| 57 | 13 | **预览打标记点上时间线** |  | 5d | 2015-09-11 | 2015-09-17 |  |  |  |  |  |  | 24h |  |
| 58 | 13.1 | CM上Preview窗口打点（四种marker） | manual | 1d | 2015-09-11 | 2015-09-11 |  |  |  |  |  |  |  |  |
| 59 | 13.2 | Jove集成 | manual | 3d | 2016-06-20 | 2016-06-22 | 56 |  |  |  |  | 张兴亮 | 24h |  |
| 60 | 14 | **双击或拖拽预览视频** |  | 2d | 2015-09-11 | 2015-09-14 |  |  |  |  |  |  | 16h |  |
| 61 | 14.1 | CM上Preview窗口 | manual | 1d | 2015-09-11 | 2015-09-11 |  |  |  |  |  |  |  |  |
| 62 | 14.2 | Jove | manual | 2d | 2016-06-23 | 2016-06-24 | 59 |  |  |  |  | 张兴亮 | 16h |  |
| 63 | 15 | **素材状态显示到icon** |  | 4d | 2015-09-11 | 2015-09-16 |  |  |  |  |  |  | 16h |  |
| 64 | 15.1 | **CM上显示ICON** |  | 2d | 2016-06-27 | 2016-06-28 |  |  |  |  | 0d |  | 16h |  |
| 65 | 15.1.1 | Jove集成 | manual | 2d | 2016-06-27 | 2016-06-28 | 62 |  |  |  |  | 张兴亮 | 16h |  |
| 66 | 16 | **排序搜索结果（素材类型，素材名，入库时间）** |  | 5d | 2016-02-24 A | 2016-03-01 |  | 100% |  | 2016-02-25 |  |  | 16h | 16h |
| 67 | 16.1 | CM上实现 | manual | 2d | 2016-02-24 A | 2016-02-25 A |  | 100% |  |  |  |  |  |  |
| 68 | 16.2 | Jove集成 | manual | 2d | 2016-02-24 A | 2016-02-25 A |  | 100% |  |  |  | 张兴亮 | 16h | 16h |
| 69 | 17 | **显示用户容量情况** |  | 1d | 2015-09-11 A | 2015-09-11 |  | 50% | 0.5d |  |  |  | 24h | 16h |
| 70 | 17.1 | CM上实现（5.25号提供） | milestone, manual | 0d | 2015-09-11 A | 2016-05-26 A |  | 100% |  |  |  | 赖秋存 |  |  |
| 71 | 17.2 | Jove集成（姚航军） | manual | 1d | 2016-02-24 A | 2016-02-24 A |  | 100% |  |  |  | 张兴亮 | 8h | 8h |
| 72 | 17.3 | 登出 | manual | 1d | 2016-05-30 A | 2016-05-30 |  |  | 1d |  |  | 张兴亮 | 8h |  |
| 73 | 17.4 | 显示登录用户名 | manual | 1d | 2016-05-23 A | 2016-05-23 A |  | 100% |  |  |  | 张兴亮 | 8h | 8h |
| 74 | 17.5 | 帮助 | manual | 1d? | 2015-09-11 | 2015-09-11 |  |  |  |  |  |  |  |  |

Notes:
- 70: 等Hive回复支持。
- 72: 未设计

| ID | WBS | Task | Type | Duration | Start | Finish | Predecessors | Complete | Resources | Work | Actual work |
| --- | --- | --- | --- | --- | --- | --- | --- | --- | --- | --- | --- |
| 75 | 18 | **Task Monitor** |  | 3d | 2015-09-11 | 2015-09-15 |  |  |  | 36h |  |
| 76 | 18.1 | 注流到EVENT | manual | 3d | 2015-08-17 | 2015-08-19 |  |  | 张兴亮1 | 24h |  |
| 77 | 18.2 | Save | manual | 0.5d | 2015-08-20 | 2015-08-20 | 76 |  | 张兴亮1 | 4h |  |
| 78 | 18.3 | Save AS | manual | 0.5d | 2015-08-20 | 2015-08-20 | 77 |  | 张兴亮1 | 4h |  |
| 79 | 18.4 | Render | manual | 0.5d | 2016-04-28 | 2016-04-28 |  |  | 张兴亮1 | 4h |  |
| 80 | 19 | **素材更新通知（5.25提供版本）** |  | 24d | 2016-05-03 A | 2016-06-03 A |  | 100% |  | 96h | 96h |
| 81 | 19.1 | 数据结构定义 | manual | 2d | 2016-05-03 A | 2016-05-04 A |  | 100% | 张兴亮 | 16h | 16h |
| 82 | 19.2 | 用户关注目录记录 | manual | 2d | 2016-05-05 A | 2016-05-06 A |  | 100% | 张兴亮 | 16h | 16h |
| 83 | 19.3 | 用户关注素材集合记录 | manual | 2d | 2016-05-03 A | 2016-05-04 A |  | 100% | 张兴亮 | 16h | 16h |
| 84 | 19.4 | 用户目录变化推送 | manual | 2d | 2016-05-31 A | 2016-06-01 A | 72 | 100% | 张兴亮 | 16h | 16h |
| 85 | 19.5 | 用户关注素材变化推送 | manual | 2d | 2016-05-05 A | 2016-05-06 A |  | 100% | 张兴亮 | 16h | 16h |
| 86 | 19.6 | 客户端自动连三个节点中的任一个 | manual | 2d | 2016-06-02 A | 2016-06-03 A | 84 | 100% | 张兴亮 | 16h | 16h |

Notes:
- 76: F
- 77: F
- 78: F
- 79: F
