# GEN2研发工作任务细化-rev1.0_v20160521

Schedule from MS Project, 2015-05-18 to 2017-06-30, A marks actual dates.
Lenovo

## Calendars

- 标准: Mon-Fri 08:00-12:00, 13:00-17:00; Sat-Sun off. Exceptions (off unless hours are given): 2016-01-01 (11).

## Resources

| Resource |
| --- |
| 王富贵 |
| 胡真瑞 |
| 王海波 |
| 叶亮 |
| 赖秋存 |
| 姚航军 |
| 邱天 |
| 贾晶晶 |
| 胡学涛 |
| 张兴亮 |
| 聂家刚 |
| 王磊 |
| 叶亮1 |
| 张兴亮1 |
| 赖秋存1 |
| 姚航军1 |

## Schedule

| ID | WBS | Task | Type | Duration | Start | Finish | Predecessors | Complete | Remaining | Actual start | Total slack | Free slack | Constraint | Resources | Work | Actual work |
| --- | --- | --- | --- | --- | --- | --- | --- | --- | --- | --- | --- | --- | --- | --- | --- | --- |
| 1 | 1 | **详细开发计划** |  | 468d? | 2015-09-11 | 2017-06-28 |  | 38% | 288.01d? | 2015-05-18 |  |  |  |  | 4527.2h | 1844.8h |
| 2 | 1.1 | **CM（赖秋存）** |  | 382d? | 2015-09-11 A | 2017-02-28 |  | 11% | 340.64d? |  |  |  |  |  | 1347.2h | 172.8h |
| 4 | 1.1.1 | **2016-5-20已经确认的** |  | 3d | 2016-07-12 | 2016-07-14 |  |  |  |  |  |  |  | 赖秋存 | 24h |  |
| 5 | 1.1.1.1 | 根据新设计文档一些对象预览效果 | manual | 1d | 2016-06-01 A | 2016-06-01 A |  | 100% |  |  |  |  |  | 赖秋存 | 8h | 8h |
| 6 | 1.1.1.2 | **预览窗口上的操作** |  | 194d | 2016-06-01 A | 2017-02-27 |  | 22% | 152.22d |  |  |  |  |  | 216h | 56h |
| 7 | 1.1.1.2.1 | 预览功能对不能预览的素材友好提示 | manual | 2d | 2016-06-02 A | 2016-06-03 A |  | 100% |  |  |  |  |  | 赖秋存 | 16h | 16h |
| 8 | 1.1.1.2.2 | 选中mark后预览窗口画面跳到对应位置 | manual | 2d | 2016-06-06 | 2016-06-07 | 7 |  |  |  |  |  |  | 赖秋存 | 16h |  |
| 9 | 1.1.1.2.3 | Essence Marker |  | 2d | 2016-06-13 | 2016-06-15 | 100 |  |  |  | 180d | 0d | finish no earlier than 2016-06-15 | 赖秋存 | 16h |  |
| 10 | 1.1.1.2.4 | Scene Marker |  | 3d | 2016-06-16 | 2016-06-20 | 9 |  |  |  | 180d |  |  | 赖秋存 | 24h |  |
| 11 | 1.1.1.2.5 | Go to PreFrame |  | 0.5d | 2016-06-21 A | 2016-06-21 A | 10 | 100% |  |  |  |  | start no earlier than 2016-06-21 | 赖秋存 | 4h | 4h |
| 12 | 1.1.1.2.6 | Go to Next Frame |  | 0.5d | 2016-06-21 A | 2016-06-21 A | 11 | 100% |  |  |  |  |  | 赖秋存 | 4h | 4h |
| 13 | 1.1.1.2.7 | **素材打段Save As new Clip（完善）** |  | 2d | 2016-06-01 | 2016-06-02 |  |  |  |  |  |  |  |  | 8h |  |
| 14 | 1.1.1.2.7.1 | CM Api上接口实现(ML) | milestone, manual | 0d | 2016-07-11 | 2016-07-11 |  |  |  |  |  |  |  | 聂家刚 |  |  |
| 15 | 1.1.1.2.7.2 | web cm上Save as new clip接口调用 | manual | 1d | 2016-06-30 | 2016-06-30 |  |  |  |  |  |  |  | 姚航军 | 8h |  |
| 16 | 1.1.1.2.8 | 支持d&d to jove time line（按钮，参数控制） | manual | 1d | 2016-06-22 | 2016-06-22 | 12 |  |  |  |  |  |  | 赖秋存 | 8h |  |
| 17 | 1.1.1.2.9 | **Timecode Switch** |  | 3d | 2016-06-01 | 2016-06-03 |  |  |  |  |  |  |  |  | 40h |  |
| 18 | 1.1.1.2.9.1 | MAM时码转换库平台搭建 | manual | 1d | 2016-06-06 | 2016-06-06 |  |  |  |  |  |  |  | 王富贵 | 8h |  |
| 19 | 1.1.1.2.9.2 | 从素材接口里时码文件 | manual | 0.5d | 2016-06-23 | 2016-06-23 | 16 |  |  |  |  |  |  | 赖秋存 | 4h |  |
| 20 | 1.1.1.2.9.3 | 调MAM接口获取时码信息（输入时码文件） | manual | 0.5d | 2016-06-23 | 2016-06-23 | 19 |  |  |  |  |  |  | 赖秋存 | 4h |  |
| 21 | 1.1.1.2.9.4 | 界面显示及时码切换 | manual | 3d | 2016-06-24 | 2016-06-28 | 20 |  |  |  |  |  |  | 赖秋存 | 24h |  |
| 22 | 1.1.1.2.10 | **Consolidate scence markers as new clip_DROP** |  | 2d | 2016-06-01 | 2016-06-02 |  |  |  |  |  |  |  |  | 8h |  |
| 23 | 1.1.1.2.10.1 | ML提供接口 | manual | 1d | 2016-06-01 | 2016-06-01 |  |  |  |  |  |  |  | 聂家刚 | 8h |  |
| 24 | 1.1.1.2.10.2 | 用户可选择新素材在CM中保存的逻辑路径 | manual | 2d | 2016-07-19 | 2016-07-20 |  |  |  |  |  |  |  |  |  |  |
| 25 | 1.1.1.2.10.3 | 新生成的素材需继承父素材的其他元数据 | manual | 1d | 2016-07-21 | 2016-07-21 |  |  |  |  |  |  |  |  |  |  |
| 26 | 1.1.1.2.10.4 | 用户可编辑新素材的素材名、comment | manual | 0.5d | 2016-07-22 | 2016-07-22 |  |  |  |  |  |  |  |  |  |  |
| 27 | 1.1.1.2.10.5 | 调接口实现应用层功能 | manual | 2d | 2016-07-25 | 2016-07-26 |  |  |  |  |  |  |  |  |  |  |
| 28 | 1.1.1.2.11 | 支持d&d to jove time line（按钮，参数控制） | manual | 1d | 2016-06-29 | 2016-06-30 |  |  |  |  |  |  |  | 赖秋存 | 8h |  |

Notes:
- 5: 如：EDL、Folder、音频、图片等
- 7: 1、主要针对异常素材 / 2、流媒体没有产生的情况 / 3、不支持的预览的制定格式素材等。
- 8: Essence marker or Logging Marker
- 14: F
- 16: 提供相关参数和元素 / 拖拽逻辑由Jove那边自行实现。
- 24: F
- 25: F
- 28: 提供相关参数和元素 / 拖拽逻辑由Jove那边自行实现。

| ID | WBS | Task | Type | Duration | Start | Finish | Predecessors | Complete | Remaining | Actual start | Total slack | Free slack | Constraint | Resources | Work | Actual work |
| --- | --- | --- | --- | --- | --- | --- | --- | --- | --- | --- | --- | --- | --- | --- | --- | --- |
| 29 | 1.1.1.2.12 | **拖素材上预览窗口** |  | 1d | 2016-06-01 | 2016-06-01 |  | 67% | 0.33d | 2016-06-29 |  |  |  |  | 48h | 32h |
| 30 | 1.1.1.2.12.1 | 拖拽多个时效果预研 | manual | 2d | 2016-06-29 A | 2016-06-30 | 17 | 80% | 0.4d |  |  |  |  | 王富贵 | 16h | 12.8h |
| 31 | 1.1.1.2.12.2 | 拖拽多个或单个 | manual | 3d | 2016-07-05 A | 2016-07-07 | 30 | 80% | 0.6d |  |  |  |  | 赖秋存 | 24h | 19.2h |
| 32 | 1.1.1.2.12.3 | 混合拖拽时候异常处理 | manual | 1d | 2016-07-12 | 2016-07-12 | 31 |  |  |  |  |  |  | 赖秋存 | 8h |  |
| 33 | 1.1.1.2.13 | 测试 | manual | 2d | 2016-07-08 | 2016-07-11 |  |  |  |  |  |  |  | 贾晶晶 | 16h |  |
| 34 | 1.1.1.3 | **属性页自定义元数据的查看和修改(drop)** |  | 1d? | 2016-06-01 | 2016-06-01 |  |  |  |  |  |  |  |  |  |  |
| 35 | 1.1.1.3.1 | 自定义元数据展示 | manual | 1d | 2016-06-01 | 2016-06-01 |  |  |  |  |  |  |  |  |  |  |
| 36 | 1.1.1.3.2 | 自定义元数据的修改保存 | manual | 2d | 2016-06-03 | 2016-06-06 |  |  |  |  |  |  |  |  |  |  |
| 37 | 1.1.1.4 | **高级搜索和全文搜索** |  | 1d? | 2016-06-01 | 2016-06-01 |  | 32% | 0.68d? | 2016-05-20 |  |  |  |  | 43.2h | 12.8h |
| 38 | 1.1.1.4.1 | 高级搜索和全文搜索的接口(ML) | manual | 1d | 2016-05-20 | 2016-05-20 |  |  |  |  |  |  |  | 聂家刚 | 8h |  |
| 39 | 1.1.1.4.2 | 高级搜索和全文搜索的接口更换 | manual | 2d | 2016-06-02 A | 2016-06-03 |  | 80% | 0.4d |  |  |  |  | 姚航军; 叶亮 | 19.2h | 12.8h |
| 40 | 1.1.1.4.3 | 高级搜索和全文搜索的测试 | manual | 2d | 2016-06-10 | 2016-06-13 |  |  |  |  |  |  |  | 贾晶晶 | 16h |  |
| 41 | 1.1.1.5 | **流程相关** |  | 57d? | 2016-06-01 | 2016-08-18 |  | 34% | 37.46d? | 2015-09-11 |  |  |  |  | 264h | 96h |
| 42 | 1.1.1.5.1 | Download（多处多素材操作） |  | 2d | 2016-07-13 | 2016-07-14 | 32 |  |  |  | -8d | 0d | start no earlier than 2016-07-05 | 赖秋存 | 16h |  |
| 43 | 1.1.1.5.2 | **Export** |  | 35d? | 2016-06-01 A | 2016-07-19 |  | 50% | 17.5d? |  |  |  |  |  | 40h | 16h |
| 44 | 1.1.1.5.2.1 | **to 3rd part system** |  | 1d | 2016-06-01 | 2016-06-01 |  |  |  |  |  |  |  | 张兴亮 | 24h |  |
| 45 | 1.1.1.5.2.1.1 | 导出到第三方接口 （ML） | manual | 1d? | 2016-06-24 | 2016-06-24 |  |  |  |  |  |  |  | 聂家刚 | 8h |  |
| 46 | 1.1.1.5.2.1.2 | 界面和接口调用实现 | manual | 1d | 2016-06-27 | 2016-06-27 |  |  |  |  |  |  |  | 张兴亮 | 8h |  |
| 47 | 1.1.1.5.2.2 | 导出到三方插件化 | manual | 2d | 2016-06-29 A | 2016-06-30 A |  | 100% |  |  |  |  |  | 张兴亮 | 16h | 16h |
| 48 | 1.1.1.5.2.3 | plugin 字典化 | milestone, manual | 0d | 2016-07-01 | 2016-07-01 | 47 |  |  |  |  |  |  | 张兴亮 |  |  |
| 49 | 1.1.1.5.3 | **整段注册到OA文件夹功能** |  | 1d? | 2016-06-01 | 2016-06-01 |  | 20% | 0.8d? | 2016-05-20 |  |  |  |  | 40h | 8h |
| 50 | 1.1.1.5.3.1 | 方案制定 | manual | 1d | 2016-06-13 | 2016-06-13 |  |  |  |  |  |  |  | 王富贵 | 8h |  |
| 51 | 1.1.1.5.3.2 | 非编取文件长度接口包装 | manual | 1d | 2016-06-14 | 2016-06-14 |  |  |  |  |  |  |  | 王富贵 | 8h |  |
| 52 | 1.1.1.5.3.3 | 接口实现(ML) | manual | 1d | 2016-05-20 A | 2016-05-20 A |  | 100% |  |  |  |  |  | 聂家刚 | 8h | 8h |
| 53 | 1.1.1.5.3.4 | 实现应用层功能 | manual | 2d | 2016-06-28 | 2016-06-29 | 93 |  |  |  |  |  |  | 姚航军 | 16h |  |

Notes:
- 30: 预研成功或者失败不影响功能本身， / 只是界面效果
- 41: 流程化
- 42: F
- 44: Export to HotFolder
- 45: 6月20号左右

| ID | WBS | Task | Type | Duration | Start | Finish | Predecessors | Complete | Remaining | Actual start | Actual finish | Constraint | Resources | Work | Actual work |
| --- | --- | --- | --- | --- | --- | --- | --- | --- | --- | --- | --- | --- | --- | --- | --- |
| 54 | 1.1.1.5.4 | **片断注册到OA文件夹功能** |  | 1d? | 2016-06-01 | 2016-06-01 |  |  |  |  |  |  |  | 8h |  |
| 55 | 1.1.1.5.4.1 | 接口实现(ML) | milestone, manual | 0d | 2016-08-05 | 2016-08-05 |  |  |  |  |  |  | 聂家刚 |  |  |
| 56 | 1.1.1.5.4.2 | 实现应用层功能 | manual | 1d | 2016-08-08 | 2016-08-08 |  |  |  |  |  |  | 姚航军 | 8h |  |
| 57 | 1.1.1.5.5 | **Register to EVENT** |  | 6d | 2016-06-01 | 2016-06-08 |  | 100% |  | 2015-09-11 | 2016-06-04 |  |  | 72h | 72h |
| 58 | 1.1.1.5.5.1 | 方案制定 | manual | 1d | 2016-05-30 A | 2016-05-30 A |  | 100% |  |  |  |  | 王富贵 | 8h | 8h |
| 59 | 1.1.1.5.5.2 | 界面 | manual | 1d | 2016-06-01 A | 2016-06-01 A |  | 100% |  |  |  |  | 叶亮 | 8h | 8h |
| 60 | 1.1.1.5.5.3 | 接口实现（PL） | manual | 1d | 2016-05-23 A | 2016-05-23 A |  | 100% |  |  |  |  | 王磊 | 8h | 8h |
| 61 | 1.1.1.5.5.4 | 应用层实现功能 | manual | 2d | 2016-05-23 A | 2016-05-24 A |  | 100% |  |  |  |  | 叶亮 | 16h | 16h |
| 62 | 1.1.1.5.5.5 | Register to EVENT插件化 | manual | 3d | 2015-09-11 A | 2016-06-04 A | 61 | 100% |  |  |  | finish no earlier than 2015-09-11 | 叶亮 | 24h | 24h |
| 63 | 1.1.1.5.5.6 | Register to EVENT插件字典化 | manual | 1d | 2016-06-01 A | 2016-06-01 A |  | 100% |  |  |  |  | 叶亮 | 8h | 8h |
| 64 | 1.1.1.5.6 | **片段Register to EVENT** |  | 6d | 2016-06-01 | 2016-06-08 |  |  | 6d | 2016-06-20 |  |  |  | 8h |  |
| 65 | 1.1.1.5.6.1 | 接口实现（PL） | milestone, manual | 0d | 2016-08-05 | 2016-08-05 |  |  |  |  |  |  | 王磊 |  |  |
| 66 | 1.1.1.5.6.2 | 应用层实现功能 | manual | 1d | 2016-06-20 A | 2016-06-20 | 65 |  | 1d |  |  |  | 叶亮 | 8h |  |
| 67 | 1.1.1.5.7 | **D&d material to 3rd part NLE TL（CM要与三方非编交互）** |  | 2d | 2016-06-01 | 2016-06-02 |  |  |  |  |  |  |  |  |  |
| 68 | 1.1.1.5.7.1 | FCP联调（4月底前） 环境呢??? | manual | 1d? | 2016-06-01 | 2016-06-01 |  |  |  |  |  |  |  |  |  |
| 69 | 1.1.1.5.7.2 | EDIUS联调（4月底前）环境呢? | manual | 1d? | 2016-06-01 | 2016-06-01 |  |  |  |  |  |  |  |  |  |
| 70 | 1.1.1.5.7.3 | Chrome插件不支持 | manual | 1d? | 2016-06-01 | 2016-06-01 |  |  |  |  |  |  |  |  |  |
| 71 | 1.1.1.5.8 | 测试 | manual | 10d | 2016-06-01 | 2016-06-14 |  |  |  |  |  |  | 贾晶晶 | 80h |  |
| 72 | 1.1.1.6 | ZIP支持（ML6月底） | manual | 1d | 2016-06-24 | 2016-06-24 | 148 |  |  |  |  |  | 姚航军 | 8h |  |
| 73 | 1.1.1.7 | stream channel | manual | 1d | 2016-06-27 | 2016-06-27 |  |  |  |  |  |  | 姚航军 | 8h |  |
| 74 | 1.1.1.8 | **Exist in playout Server** |  | 1d? | 2016-06-01 | 2016-06-01 |  |  |  |  |  |  |  | 16h |  |
| 75 | 1.1.1.8.1 | 接口实现(PL) | manual | 1d | 2016-05-31 | 2016-05-31 |  |  |  |  |  |  | 王磊 | 8h |  |
| 76 | 1.1.1.8.2 | 实现应用层功能 | manual | 1d | 2016-06-06 | 2016-06-06 |  |  |  |  |  |  | 姚航军 | 8h |  |
| 77 | 1.1.1.9 | **One Generation Forward和One Generation Backward** |  | 1d? | 2016-06-01 | 2016-06-01 |  |  |  |  |  |  |  | 8h |  |
| 78 | 1.1.1.9.1 | 接口实现(ML) | manual | 1d | 2016-08-19 | 2016-08-19 |  |  |  |  |  |  | 聂家刚 | 8h |  |
| 79 | 1.1.1.9.2 | One Generation Forward实现应用层功能 | manual | 1d? | 2016-06-01 | 2016-06-01 |  |  |  |  |  |  |  |  |  |
| 80 | 1.1.1.9.3 | One Generation Backward功能实现 | manual | 1d? | 2016-06-01 | 2016-06-01 |  |  |  |  |  |  |  |  |  |

Notes:
- 57: 注册到Event。王磊5月底提供接口 / 注册OA Folder，聂帅6月中旬提供接口
- 64: 注册到Event。王磊5月底提供接口 / 注册OA Folder，聂帅6月中旬提供接口
- 74: 王磊5月底提供接口
- 77: 聂帅。8月份中旬提供接口 / 功能复杂，需要相关的设计文档 / 调ml接口，需要根据接口反馈弹出相应信息窗口

| ID | WBS | Task | Type | Duration | Start | Finish | Predecessors | Total slack | Free slack | Resources | Work |
| --- | --- | --- | --- | --- | --- | --- | --- | --- | --- | --- | --- |
| 81 | 1.1.1.10 | **marker点的显示和修改（备注：共四种）** |  | 1d? | 2016-06-01 | 2016-06-01 |  |  |  |  | 40h |
| 82 | 1.1.1.10.1 | 接口实现(ML) | manual | 1d? | 2016-05-20 | 2016-05-20 |  |  |  | 聂家刚 | 8h |
| 83 | 1.1.1.10.2 | 4种marker点的应用层显示 | manual | 2d | 2016-06-07 | 2016-06-08 | 76 |  |  | 姚航军 | 16h |
| 84 | 1.1.1.10.3 | 4种marker点的应用层修改、删除 | manual | 2d | 2016-06-09 | 2016-06-10 | 83 |  |  | 姚航军 | 16h |
| 85 | 1.1.1.11 | **修改元数据加锁** |  | 1d? | 2016-06-01 | 2016-06-01 |  |  |  |  | 16h |
| 86 | 1.1.1.11.1 | 接口实现(ML) | manual | 1d | 2016-06-30 | 2016-06-30 |  |  |  | 聂家刚 | 8h |
| 87 | 1.1.1.11.2 | 实现应用层功能 | manual | 1d | 2016-06-13 | 2016-06-13 | 84 |  |  | 姚航军 | 8h |
| 88 | 1.1.1.12 | **上传功能** |  | 8d | 2016-06-01 | 2016-06-10 |  |  |  |  | 40h |
| 89 | 1.1.1.12.1 | 上载入库界面功能改动 | manual | 3d | 2016-07-05 | 2016-07-07 | 42 |  |  | 赖秋存 | 24h |
| 90 | 1.1.1.12.2 | 上传大文件 | manual | 2d | 2016-07-11 | 2016-07-12 | 27 |  |  | 张兴亮 | 16h |
| 91 | 1.1.1.13 | **素材上状态显示** |  | 1d? | 2016-06-01 | 2016-06-01 |  |  |  |  | 24h |
| 92 | 1.1.1.13.1 | 需要接口包含相应参数(ML)，详见备注 | manual | 1d? | 2016-05-20 | 2016-05-20 |  |  |  | 聂家刚 | 8h |
| 93 | 1.1.1.13.2 | 实现应用层功能 | manual | 2d | 2016-06-14 | 2016-06-15 | 87 |  |  | 姚航军 | 16h |
| 94 | 1.1.1.14 | 链接Jove的链接中UserToken需要随登录用户变化 | manual | 1d | 2016-06-16 | 2016-06-16 | 93 |  |  | 姚航军 | 8h |
| 95 | 1.1.1.15 | 全文搜索、高级搜索通过 回车键 执行搜索功能 | manual | 1d | 2016-06-17 | 2016-06-17 | 94 |  |  | 姚航军 | 8h |
| 96 | 1.1.1.16 | 导航路径的界面逻辑，当路径过长时，隐藏中间路径。显示第一个和最后一个 | manual | 1d | 2016-06-29 | 2016-06-29 |  |  |  | 赖秋存 | 8h |
| 97 | 1.1.1.17 | **图标模式下各项标识显示** |  | 1d? | 2016-06-01 | 2016-06-01 |  |  |  |  | 24h |
| 98 | 1.1.1.17.1 | 更换为高级搜索接口返回右侧对象 | milestone, manual | 0d | 2016-06-01 | 2016-06-01 |  |  |  | 赖秋存 |  |
| 99 | 1.1.1.17.2 | 非编取文件格式接口包装 | manual | 1d | 2016-06-07 | 2016-06-07 |  |  |  | 王富贵 | 8h |
| 100 | 1.1.1.17.3 | H\L\WA\RED MARK\D\P\I | manual | 1d | 2016-06-10 | 2016-06-10 |  |  |  | 赖秋存 | 8h |
| 101 | 1.1.1.17.4 | 鼠标悬浮在I/P标识上时，显示具体的帧率 | manual | 1d | 2016-06-15 | 2016-06-15 |  |  |  | 赖秋存 | 8h |
| 102 | 1.1.1.18 | **全文搜索条件的根据用户保存（不是搜索结果条件）** |  | 1d? | 2016-06-01 | 2016-06-01 |  |  |  |  | 24h |
| 103 | 1.1.1.18.1 | 接口实现，详见备注(ML) | manual | 1d? | 2016-06-10 | 2016-06-10 |  |  |  | 聂家刚 | 8h |
| 104 | 1.1.1.18.2 | 实现应用层功能 |  | 2d | 2016-06-20 | 2016-06-21 | 95 | -14d | 0d | 姚航军 | 16h |

Notes:
- 81: Essence Marker, Scene Marker, Logging Marker, and Change Marker
- 89: 显示文件大小 / 失败的要显示出来 / 成功的清掉 / 失败的可以重做 / 一次只能100个
- 90: F
- 91: �Hi-res: H / �Low-res: L / �WA workflow: WA / �Ingesting Clip: Red Mark / �Dolby-E Clip: D/ �Progressive: P / �Interlace: I
- 92: 参数需要支持 / �Hi-res: H / �Low-res: L / �WA workflow: WA / �Ingesting Clip: Red Mark / �Dolby-E Clip: D/ �Progressive: P / �Interlace: I
- 97: 调用 高级搜索接口。才能获取到这些信息。。
- 98: F
- 100: F
- 101: F
- 103: 读取和保存 搜索条件

| ID | WBS | Task | Type | Duration | Start | Finish | Predecessors | Remaining | Total slack | Free slack | Constraint | Resources | Work |
| --- | --- | --- | --- | --- | --- | --- | --- | --- | --- | --- | --- | --- | --- |
| 105 | 1.1.1.19 | **搜索结果条件保存** |  | 1d? | 2016-06-01 | 2016-06-01 |  |  |  |  |  |  | 32h |
| 106 | 1.1.1.19.1 | 接口实现,详见备注(ML) | manual | 1d? | 2016-06-10 | 2016-06-10 |  |  |  |  |  | 聂家刚 | 8h |
| 107 | 1.1.1.19.2 | 实现应用层功能 | manual | 3d | 2016-06-27 | 2016-06-29 | 89 |  |  |  |  | 姚航军 | 24h |
| 108 | 1.1.1.20 | **登录的相关权限验证** |  | 1d? | 2016-06-01 | 2016-06-01 |  |  |  |  |  |  | 24h |
| 109 | 1.1.1.20.1 | 调用应用程序权限验证 | manual | 1d | 2016-06-22 | 2016-06-22 | 104 |  |  |  |  | 姚航军 | 8h |
| 110 | 1.1.1.20.2 | 调用浮动权限验证 | manual | 1d | 2016-06-23 | 2016-06-23 | 109 |  |  |  |  | 姚航军 | 8h |
| 111 | 1.1.1.20.3 | 登录时网络异常，接口调用失败等处理 | manual | 1d | 2016-08-17 | 2016-08-17 |  |  |  |  |  | 赖秋存1 | 8h |
| 112 | 1.1.1.21 | 列表模式各列拖拽调整顺序 | manual | 4d | 2016-07-14 | 2016-07-19 | 107 |  |  |  |  | 赖秋存 | 32h |
| 113 | 1.1.1.22 | 系统使用中网络异常时系统相关友好的处理逻辑 | manual | 2d | 2016-08-18 | 2016-08-19 | 111 |  |  |  |  | 赖秋存1 | 16h |
| 114 | 1.1.1.23 | **高级搜索条件自定义（DROP）** |  | 14d | 2016-06-01 | 2016-06-20 |  |  |  |  |  |  |  |
| 115 | 1.1.1.23.1 | 高级搜索条件模板协议定义 | manual | 1d | 2016-07-29 | 2016-07-29 | 112 |  |  |  |  |  |  |
| 116 | 1.1.1.23.2 | 获取HIVE字段 | manual | 1d | 2016-08-01 | 2016-08-01 | 115 |  |  |  |  |  |  |
| 117 | 1.1.1.23.3 | 模板读写接口 | manual | 2d | 2016-08-02 | 2016-08-03 | 116 |  |  |  |  |  |  |
| 118 | 1.1.1.23.4 | UI界面逻辑实现 | manual | 3d | 2016-07-08 | 2016-07-12 |  |  |  |  |  |  |  |
| 119 | 1.1.1.23.5 | 测试 | manual | 2d | 2016-08-11 | 2016-08-12 | 118 |  |  |  |  |  |  |
| 120 | 1.1.1.24 | **任务控制** |  | 191d? | 2016-06-01 A | 2017-02-22 |  | 191d? |  |  |  |  | 208h |
| 121 | 1.1.1.24.1 | 数据库设计 | manual | 1d | 2016-08-04 | 2016-08-04 | 117 |  |  |  |  | 赖秋存1 | 8h |
| 122 | 1.1.1.24.2 | 任务框架设计 | manual | 3d | 2016-08-05 | 2016-08-09 |  |  |  |  |  | 赖秋存1 | 24h |
| 123 | 1.1.1.24.3 | 任务查看UI | manual | 2d | 2016-07-15 A | 2016-07-19 |  | 2d |  |  |  | 赖秋存1 | 16h |
| 124 | 1.1.1.24.4 | Upload |  | 2d | 2016-07-19 | 2016-07-21 | 123 |  | 147.6d | 0d |  | 赖秋存1 | 16h |
| 125 | 1.1.1.24.5 | Save as Clip |  | 2d | 2016-07-21 | 2016-07-25 | 124 |  | 147.6d | 0d | start no earlier than 2016-07-20 | 赖秋存1 | 16h |
| 126 | 1.1.1.24.6 | Export to 3rd Party |  | 3d | 2016-07-25 | 2016-07-28 | 125 |  | 147.6d | 0d |  | 赖秋存1 | 24h |
| 127 | 1.1.1.24.7 | Save as EDL |  | 2d | 2016-07-28 | 2016-08-01 | 126 |  | 147.6d |  |  | 赖秋存1 | 16h |
| 128 | 1.1.1.24.8 | **Register to OA FOLDER** |  | 5d | 2016-06-01 | 2016-06-07 |  |  |  |  |  |  | 64h |
| 129 | 1.1.1.24.8.1 | 注册到OA任务 | manual | 1d | 2016-08-10 | 2016-08-10 |  |  |  |  |  | 张兴亮1 | 8h |
| 130 | 1.1.1.24.8.2 | 进度计算 | manual | 2d | 2016-08-11 | 2016-08-12 | 129 |  |  |  |  | 张兴亮1 | 16h |
| 131 | 1.1.1.24.8.3 | 测试 | manual | 5d | 2016-06-01 | 2016-06-07 |  |  |  |  |  | 贾晶晶 | 40h |

Notes:
- 105: 用户可以最多保存5个搜索结果
- 106: F
- 107: F
- 108: 1、应用程序权限验证 / 2、浮动权限验证
- 109: F
- 110: F
- 111: F
- 112: 新加的功能 / 界面逻辑自己实现的，jqGrid不满足
- 113: F
- 114: 有clip、FOlder、EDL、Marker四个tab/ 其中clip和EDL有自定义条件。
- 115: F
- 116: 不了解，需要学习
- 118: F
- 119: F
- 121: F
- 122: F
- 123: F
- 124: F
- 125: F
- 126: F
- 127: F

| ID | WBS | Task | Type | Duration | Start | Finish | Predecessors | Resources | Work |
| --- | --- | --- | --- | --- | --- | --- | --- | --- | --- |
| 132 | 1.1.1.24.9 | **Register to EVENT** |  | 8d | 2016-06-01 | 2016-06-10 |  |  | 24h |
| 133 | 1.1.1.24.9.1 | 任务入库 | manual | 1d | 2016-08-10 | 2016-08-10 |  | 叶亮1 | 8h |
| 134 | 1.1.1.24.9.2 | 任务进度计算 | manual | 2d | 2016-08-15 | 2016-08-16 | 133 | 张兴亮1 | 16h |
| 135 | 1.1.1.24.9.3 | 测试 | manual | 1d | 2016-06-01 | 2016-06-01 |  |  |  |
| 136 | 1.1.1.25 | **Set Title Stamp** |  | 1d? | 2016-06-01 | 2016-06-01 |  |  | 16h |
| 137 | 1.1.1.25.1 | 接口(ML) | manual | 1d? | 2016-06-20 | 2016-06-20 |  | 聂家刚 | 8h |
| 138 | 1.1.1.25.2 | 应用层实现 | manual | 1d? | 2016-07-06 | 2016-07-06 |  | 姚航军 | 8h |
| 139 | 1.1.1.26 | **元数据自定义要增加能不能参与到全文搜索功能(DROP)** |  | 2d? | 2016-06-01 | 2016-06-02 |  |  |  |
| 140 | 1.1.1.26.1 | Hive接口了解 | manual | 1d | 2016-08-23 | 2016-08-23 | 115 |  |  |
| 141 | 1.1.1.26.2 | 接口调用实现 | manual | 1d | 2016-08-24 | 2016-08-24 | 140 |  |  |
| 142 | 1.1.1.27 | **Web CM所有的消息推送** |  | 1d? | 2016-06-01 | 2016-06-01 |  |  | 40h |
| 143 | 1.1.1.27.1 | 应用层增加对象推送更新 | manual | 2d | 2016-07-01 | 2016-07-04 |  | 姚航军 | 16h |
| 144 | 1.1.1.27.2 | 应用层删除对象推送更新 | manual | 1d | 2016-07-05 | 2016-07-05 | 143 | 姚航军 | 8h |
| 145 | 1.1.1.27.3 | 应用层修改对象推送更新 | manual | 2d | 2016-07-06 | 2016-07-07 | 144 | 姚航军 | 16h |
| 146 | 1.1.1.28 | **用户登录系统相关规则实现** |  | 1d | 2016-06-01 | 2016-06-01 |  |  | 16h |
| 147 | 1.1.1.28.1 | 不让用户多地登录实现 | manual | 1d | 2016-07-13 | 2016-07-13 | 118 | 姚航军 | 8h |
| 148 | 1.1.1.28.2 | 登录后超时处理 | manual | 1d | 2016-07-14 | 2016-07-14 | 147 | 姚航军 | 8h |
| 149 | 1.1.2 | pulic的素材拷贝到OA目录下。不能用常规的拷贝接口 | manual | 1d | 2016-06-27 | 2016-06-27 |  | 赖秋存 | 8h |
| 150 | 1.1.3 | 网管增加用户空间报警值 | manual | 1d | 2015-09-11 | 2015-09-11 |  | 聂家刚 | 8h |
| 151 | 1.1.4 | MAC平台兼容性测试调整（没平台和测试） | manual | 1d? | 2015-09-11 | 2015-09-11 |  |  |  |
| 152 | 1.1.5 | 界面字典化 | manual | 5d | 2016-06-17 | 2016-06-23 |  | 姚航军 | 24h |
| 153 | 1.1.6 | 文件夹COPY | manual | 2d | 2016-06-08 | 2016-06-09 |  | 赖秋存 | 16h |
| 154 | 1.1.7 | Regenerate Proxy(DROP) | manual | 2d | 2016-08-05 | 2016-08-08 |  |  |  |
| 155 | 1.1.8 | **2016-5-20未确定的(DROP)** |  | 191d? | 2015-09-11 | 2016-06-06 |  |  |  |
| 156 | 1.1.8.1 | **元数据自定义** |  | 1d? | 2015-09-11 | 2015-09-11 |  |  |  |
| 157 | 1.1.8.1.1 | List View元数据显示 | manual | 1d? | 2015-09-11 | 2015-09-11 |  |  |  |

Notes:
- 133: F
- 134: F
- 138: F
- 140: F
- 141: F
- 142: 1、增加对象推送更新 / 2、删除对象推送更新 / 3、修改对象推送更新
- 143: F
- 144: F
- 145: F
- 146: 1. 不允许同一用户 多地或多终端登录/ 2. 没有登出直接关闭浏览器。有45秒的保护时间，如果45秒内没有重新打开CM，就自动LOG OUT
- 147: F
- 148: F
- 149: F
- 152: F
- 154: F

| ID | WBS | Task | Type | Duration | Start | Finish | Predecessors | Complete | Remaining | Total slack | Resources | Work | Actual work |
| --- | --- | --- | --- | --- | --- | --- | --- | --- | --- | --- | --- | --- | --- |
| 158 | 1.1.9 | **支持右键菜单** |  | 15d | 2015-09-11 | 2015-10-01 |  |  |  |  |  | 120h |  |
| 159 | 1.1.9.1 | 树上菜单 | manual | 10d | 2016-08-08 | 2016-08-19 | 152 |  |  |  | 姚航军1 | 80h |  |
| 160 | 1.1.9.2 | 素材列表菜单 | manual | 5d | 2016-08-10 | 2016-08-16 | 145 |  |  |  | 姚航军1 | 40h |  |
| 162 | 1.2 | **Jove（王海波）** |  | 240d? | 2015-08-17 A | 2016-07-18 |  | 62% | 90.96d? | 0d |  | 892h | 584h |
| 163 | 1.2.1 | **素材列表** |  | 10d | 2016-02-16 A | 2016-02-29 A |  | 100% |  |  | 邱天 | 80h | 80h |
| 164 | 1.2.1.1 | 树形菜单，素材显示可调宽度 | manual | 1d | 2016-02-16 A | 2016-02-16 A |  | 100% |  |  |  |  |  |
| 165 | 1.2.1.2 | 记住本机位置 | manual | 1d | 2016-02-16 A | 2016-02-16 A |  | 100% |  |  |  |  |  |
| 166 | 1.2.2 | 时间线 | manual | 1d | 2016-03-16 A | 2016-03-16 A |  | 100% |  |  | 王海波 | 8h | 8h |
| 167 | 1.2.3 | 故事板属性 | milestone, manual | 0d | 2016-05-12 A | 2016-05-13 A | 166 | 100% |  |  | 张兴亮 |  |  |
| 168 | 1.2.4 | **Timeline's Tool Bar** |  | 83d | 2016-03-24 A | 2016-07-18 |  | 71% | 24.1d | 0d |  | 248h | 176h |
| 169 | 1.2.4.1 | Timeline Duration | manual | 1d | 2016-03-24 A | 2016-03-24 A | 167 | 100% |  |  | 王海波 | 8h | 8h |
| 170 | 1.2.4.2 | **Text** |  | 2d | 2016-03-25 A | 2016-03-28 A |  | 100% |  |  |  | 56h | 56h |
| 171 | 1.2.4.2.1 | Add Text - Font Type | manual | 1d | 2016-03-25 A | 2016-03-28 A |  | 100% |  |  | 王海波 | 8h | 8h |
| 172 | 1.2.4.2.2 | Add Text - Font Style | manual | 1d | 2016-03-25 A | 2016-03-25 A |  | 100% |  |  | 王海波 | 8h | 8h |
| 173 | 1.2.4.2.3 | Add Text - Font Size | manual | 1d | 2016-03-25 A | 2016-03-25 A |  | 100% |  |  | 王海波 | 8h | 8h |
| 174 | 1.2.4.2.4 | Add Text - Font Color | manual | 1d | 2016-03-25 A | 2016-03-25 A |  | 100% |  |  | 王海波 | 8h | 8h |
| 175 | 1.2.4.2.5 | Add Text - Fill Color | manual | 1d | 2016-03-25 A | 2016-03-25 A |  | 100% |  |  | 王海波 | 8h | 8h |
| 176 | 1.2.4.2.6 | Add Text - Color Panel | manual | 1d | 2016-03-25 A | 2016-03-25 A |  | 100% |  |  | 王海波 | 8h | 8h |
| 177 | 1.2.4.2.7 | Set Title Stamp of Story | manual | 1d | 2016-03-25 A | 2016-03-25 A |  | 100% |  |  | 王海波 | 8h | 8h |
| 178 | 1.2.4.3 | Essence Mark | manual | 3d | 2016-05-09 A | 2016-05-11 A | 169 | 100% |  |  | 王海波 | 24h | 24h |
| 179 | 1.2.4.4 | Save Story | manual | 2d | 2016-04-04 A | 2016-04-05 A |  | 100% |  |  | 王海波 | 16h | 16h |
| 180 | 1.2.4.5 | Save as Clip | manual | 5d | 2016-04-06 A | 2016-04-12 A | 179 | 100% |  |  | 王海波 | 40h | 40h |
| 181 | 1.2.4.6 | Save as EDL | manual | 2d | 2016-04-13 A | 2016-04-14 A | 180 | 100% |  |  | 王海波 | 16h | 16h |
| 182 | 1.2.4.7 | Register to OA Folder | manual | 3d | 2016-07-11 | 2016-07-13 | 212 |  |  |  | 张兴亮 | 24h |  |
| 183 | 1.2.4.8 | Register to EVENT | manual | 3d | 2016-07-14 | 2016-07-18 | 182 |  |  |  | 张兴亮 | 24h |  |
| 184 | 1.2.4.9 | Clear Timeline | manual | 1d | 2016-04-20 A | 2016-04-20 A |  | 100% |  |  | 王海波 | 8h | 8h |
| 185 | 1.2.4.10 | Timeline Zoom In/Out | manual | 1d | 2016-04-18 A | 2016-04-18 A |  | 100% |  |  | 王海波 | 8h | 8h |
| 186 | 1.2.4.11 | 测试 | manual | 3d | 2016-03-24 | 2016-03-28 |  |  |  |  | 胡学涛 | 24h |  |

Notes:
- 159: F
- 160: F

| ID | WBS | Task | Type | Duration | Start | Finish | Predecessors | Complete | Actual start | Actual finish | Total slack | Free slack | Constraint | Resources | Work | Actual work |
| --- | --- | --- | --- | --- | --- | --- | --- | --- | --- | --- | --- | --- | --- | --- | --- | --- |
| 187 | 1.2.5 | **Timeline's Track** |  | 2d | 2016-03-29 A | 2016-03-30 A |  | 100% |  |  |  |  |  |  | 48h | 48h |
| 188 | 1.2.5.1 | Text Track | manual | 1d | 2016-03-29 A | 2016-03-29 A |  | 100% |  |  |  |  |  | 王海波 | 8h | 8h |
| 189 | 1.2.5.2 | Graphic Track | manual | 1d | 2016-03-29 A | 2016-03-29 A |  | 100% |  |  |  |  |  | 王海波 | 8h | 8h |
| 190 | 1.2.5.3 | Video Track | manual | 1d | 2016-03-29 A | 2016-03-29 A |  | 100% |  |  |  |  |  | 王海波 | 8h | 8h |
| 191 | 1.2.5.4 | Audio Track x 2 | manual | 1d | 2016-03-29 A | 2016-03-29 A |  | 100% |  |  |  |  |  | 王海波 | 8h | 8h |
| 192 | 1.2.5.5 | 测试 | manual | 2d | 2016-03-29 A | 2016-03-30 A | 186 | 100% |  |  |  |  |  | 胡学涛 | 16h | 16h |
| 193 | 1.2.6 | **Timeline's Playline** |  | 94d | 2015-09-11 A | 2016-01-21 |  | 100% |  | 2016-05-26 |  |  |  |  | 88h | 88h |
| 194 | 1.2.6.1 | Title Stamp Icon | manual | 1d | 2016-02-22 A | 2016-02-22 A |  | 100% |  |  |  |  |  | 王海波 | 8h | 8h |
| 195 | 1.2.6.2 | Scene In/Out Mark(设计已经DROP) | manual | 3d | 2016-05-19 A | 2016-05-24 A |  | 100% |  |  |  |  |  | 王海波 | 24h | 24h |
| 196 | 1.2.6.3 | Essence Mark Icon | manual | 2d | 2016-05-25 A | 2016-05-26 A | 195 | 100% |  |  |  |  |  | 王海波 | 16h | 16h |
| 197 | 1.2.6.4 | Now line | manual | 1d | 2016-02-22 A | 2016-02-22 A |  | 100% |  |  |  |  |  | 王海波 | 8h | 8h |
| 198 | 1.2.6.5 | 游标与显示部分合二为一 | manual | 1d | 2015-09-11 A | 2015-09-11 A |  | 100% |  |  |  |  |  |  |  |  |
| 199 | 1.2.6.6 | 测试 | manual | 2d | 2016-02-22 A | 2016-02-23 A |  | 100% |  |  |  |  |  | 胡学涛 | 16h | 16h |
| 200 | 1.2.6.7 | 字典化 |  | 2d | 2016-04-20 A | 2016-04-21 A |  | 100% |  |  |  |  | start no earlier than 2016-04-20 | 张兴亮 | 16h | 16h |
| 201 | 1.2.7 | **Timeline Player** |  | 28d | 2015-09-11 | 2015-10-20 |  | 100% | 2016-04-25 | 2016-06-01 |  |  |  |  | 48h | 48h |
| 202 | 1.2.7.1 | 素材预览 | manual | 2d | 2016-04-25 A | 2016-04-26 A |  | 100% |  |  |  |  |  | 张兴亮 | 16h | 16h |
| 203 | 1.2.7.2 | 播放器工具条 | manual | 4d | 2016-05-18 A | 2016-06-01 A |  | 100% |  |  |  |  |  | 王海波 | 32h | 32h |
| 204 | 1.2.8 | **保存按钮分三个（save,save as ,render）** |  | 1d | 2015-09-11 | 2015-09-11 |  |  |  |  |  |  |  |  | 32h |  |
| 205 | 1.2.8.1 | Save as （不允许重名） | manual | 1d | 2016-06-06 | 2016-06-06 | 248 |  |  |  |  |  |  | 张兴亮 | 8h |  |
| 206 | 1.2.8.2 | render(EDL不能被查，找NJG确认) |  | 3d | 2016-06-07 | 2016-06-09 | 205 |  |  |  | -193d | 0d |  | 张兴亮 | 24h |  |
| 207 | 1.2.9 | **素材成组** |  | 1d? | 2015-09-11 | 2015-09-11 |  |  |  |  |  |  |  |  | 32h |  |
| 208 | 1.2.9.1 | 调研 | manual | 2d | 2016-06-29 | 2016-06-30 | 227 |  |  |  |  |  |  | 张兴亮 | 16h |  |
| 209 | 1.2.9.2 | 实现 | manual | 2d | 2016-07-01 | 2016-07-04 | 208 |  |  |  |  |  |  | 张兴亮 | 16h |  |
| 210 | 1.2.10 | **吸附功能** |  | 1d | 2015-09-11 | 2015-09-11 |  |  |  |  |  |  |  |  | 32h |  |
| 211 | 1.2.10.1 | 调研 | manual | 2d | 2016-07-05 | 2016-07-06 | 209 |  |  |  |  |  |  | 张兴亮 | 16h |  |
| 212 | 1.2.10.2 | 实现 | manual | 2d | 2016-07-07 | 2016-07-08 | 211 |  |  |  |  |  |  | 张兴亮 | 16h |  |

Notes:
- 191: 后来与设计确认一个音频

| ID | WBS | Task | Type | Duration | Start | Finish | Predecessors | Complete | Remaining | Actual finish | Total slack | Resources | Work | Actual work |
| --- | --- | --- | --- | --- | --- | --- | --- | --- | --- | --- | --- | --- | --- | --- |
| 213 | 1.2.11 | **MV/SV切换** |  | 1d | 2016-06-10 A | 2016-06-10 A |  | 100% |  |  |  | 张兴亮 | 8h | 8h |
| 214 | 1.2.11.1 | 窗口大小调整 | manual | 1d | 2016-06-10 A | 2016-06-10 A | 206 | 100% |  |  |  | 张兴亮 | 8h | 8h |
| 215 | 1.2.12 | **搜索** |  | 1d? | 2015-09-11 | 2015-09-11 |  |  |  |  |  |  | 40h |  |
| 216 | 1.2.12.1 | 全文搜索（找叶亮） | manual | 2d | 2016-06-13 | 2016-06-14 | 214 |  |  |  |  | 张兴亮 | 16h |  |
| 217 | 1.2.12.2 | 高级搜索 | manual | 2d | 2016-06-15 | 2016-06-16 | 216 |  |  |  |  | 张兴亮 | 16h |  |
| 218 | 1.2.12.3 | 显示搜索结果数量 | manual | 1d | 2016-06-17 | 2016-06-17 | 217 |  |  |  |  | 张兴亮 | 8h |  |
| 219 | 1.2.13 | **预览打标记点上时间线** |  | 5d | 2015-09-11 | 2015-09-17 |  |  |  |  |  |  | 24h |  |
| 220 | 1.2.13.1 | CM上Preview窗口打点（四种marker） | manual | 1d | 2015-09-11 | 2015-09-11 |  |  |  |  |  |  |  |  |
| 221 | 1.2.13.2 | Jove集成 | manual | 3d | 2016-06-20 | 2016-06-22 | 218 |  |  |  |  | 张兴亮 | 24h |  |
| 222 | 1.2.14 | **双击或拖拽预览视频** |  | 2d | 2015-09-11 | 2015-09-14 |  |  |  |  |  |  | 16h |  |
| 223 | 1.2.14.1 | CM上Preview窗口 | manual | 1d | 2015-09-11 | 2015-09-11 |  |  |  |  |  |  |  |  |
| 224 | 1.2.14.2 | Jove | manual | 2d | 2016-06-23 | 2016-06-24 | 221 |  |  |  |  | 张兴亮 | 16h |  |
| 225 | 1.2.15 | **素材状态显示到icon** |  | 4d | 2015-09-11 | 2015-09-16 |  |  |  |  |  |  | 16h |  |
| 226 | 1.2.15.1 | **CM上显示ICON** |  | 2d | 2016-06-27 | 2016-06-28 |  |  |  |  | 0d |  | 16h |  |
| 227 | 1.2.15.1.1 | Jove集成 | manual | 2d | 2016-06-27 | 2016-06-28 | 224 |  |  |  |  | 张兴亮 | 16h |  |
| 228 | 1.2.16 | **排序搜索结果（素材类型，素材名，入库时间）** |  | 5d | 2016-02-24 A | 2016-03-01 |  | 100% |  | 2016-02-25 |  |  | 16h | 16h |
| 229 | 1.2.16.1 | CM上实现 | manual | 2d | 2016-02-24 A | 2016-02-25 A |  | 100% |  |  |  |  |  |  |
| 230 | 1.2.16.2 | Jove集成 | manual | 2d | 2016-02-24 A | 2016-02-25 A |  | 100% |  |  |  | 张兴亮 | 16h | 16h |
| 231 | 1.2.17 | **显示用户容量情况** |  | 1d | 2015-09-11 A | 2015-09-11 |  | 50% | 0.5d |  |  |  | 24h | 16h |
| 232 | 1.2.17.1 | CM上实现（5.25号提供） | milestone, manual | 0d | 2015-09-11 A | 2016-05-26 A |  | 100% |  |  |  | 赖秋存 |  |  |
| 233 | 1.2.17.2 | Jove集成（姚航军） | manual | 1d | 2016-02-24 A | 2016-02-24 A |  | 100% |  |  |  | 张兴亮 | 8h | 8h |
| 234 | 1.2.17.3 | 登出 | manual | 1d | 2016-05-30 A | 2016-05-30 |  |  | 1d |  |  | 张兴亮 | 8h |  |
| 235 | 1.2.17.4 | 显示登录用户名 | manual | 1d | 2016-05-23 A | 2016-05-23 A |  | 100% |  |  |  | 张兴亮 | 8h | 8h |
| 236 | 1.2.17.5 | 帮助 | manual | 1d? | 2015-09-11 | 2015-09-11 |  |  |  |  |  |  |  |  |

Notes:
- 232: 等Hive回复支持。
- 234: 未设计

| ID | WBS | Task | Type | Duration | Start | Finish | Predecessors | Complete | Remaining | Actual start | Total slack | Free slack | Constraint | Resources | Work | Actual work |
| --- | --- | --- | --- | --- | --- | --- | --- | --- | --- | --- | --- | --- | --- | --- | --- | --- |
| 237 | 1.2.18 | **Task Monitor** |  | 3d | 2015-09-11 | 2015-09-15 |  |  |  |  |  |  |  |  | 36h |  |
| 238 | 1.2.18.1 | 注流到EVENT | manual | 3d | 2015-08-17 | 2015-08-19 |  |  |  |  |  |  |  | 张兴亮1 | 24h |  |
| 239 | 1.2.18.2 | Save | manual | 0.5d | 2015-08-20 | 2015-08-20 | 238 |  |  |  |  |  |  | 张兴亮1 | 4h |  |
| 240 | 1.2.18.3 | Save AS | manual | 0.5d | 2015-08-20 | 2015-08-20 | 239 |  |  |  |  |  |  | 张兴亮1 | 4h |  |
| 241 | 1.2.18.4 | Render | manual | 0.5d | 2016-04-28 | 2016-04-28 | 250 |  |  |  |  |  |  | 张兴亮1 | 4h |  |
| 242 | 1.2.19 | **素材更新通知（5.25提供版本）** |  | 24d | 2016-05-03 A | 2016-06-03 A |  | 100% |  |  |  |  |  |  | 96h | 96h |
| 243 | 1.2.19.1 | 数据结构定义 | manual | 2d | 2016-05-03 A | 2016-05-04 A |  | 100% |  |  |  |  |  | 张兴亮 | 16h | 16h |
| 244 | 1.2.19.2 | 用户关注目录记录 | manual | 2d | 2016-05-05 A | 2016-05-06 A |  | 100% |  |  |  |  |  | 张兴亮 | 16h | 16h |
| 245 | 1.2.19.3 | 用户关注素材集合记录 | manual | 2d | 2016-05-03 A | 2016-05-04 A |  | 100% |  |  |  |  |  | 张兴亮 | 16h | 16h |
| 246 | 1.2.19.4 | 用户目录变化推送 | manual | 2d | 2016-05-31 A | 2016-06-01 A | 234 | 100% |  |  |  |  |  | 张兴亮 | 16h | 16h |
| 247 | 1.2.19.5 | 用户关注素材变化推送 | manual | 2d | 2016-05-05 A | 2016-05-06 A |  | 100% |  |  |  |  |  | 张兴亮 | 16h | 16h |
| 248 | 1.2.19.6 | 客户端自动连三个节点中的任一个 | manual | 2d | 2016-06-02 A | 2016-06-03 A | 246 | 100% |  |  |  |  |  | 张兴亮 | 16h | 16h |
| 249 | 1.3 | **Premiere plugin（叶亮）** |  | 470d? | 2015-09-11 | 2017-06-30 |  | 6% | 441.52d? | 2015-05-18 |  |  |  |  | 1000h | 56h |
| 250 | 1.3.1 | **基础调研** |  | 78d | 2016-01-11 A | 2016-04-27 |  |  | 78d |  |  |  |  |  | 264h |  |
| 251 | 1.3.1.1 | Premiere访问HIVE节点方式 | manual | 5d | 2016-01-11 | 2016-01-15 |  |  |  |  |  |  |  | 叶亮 | 40h |  |
| 252 | 1.3.1.2 | Render素材入库 | manual | 5d | 2016-01-18 | 2016-01-22 |  |  |  |  |  |  |  | 叶亮 | 40h |  |
| 253 | 1.3.1.3 | D&D Render Clip to Rundown | manual | 5d | 2016-01-25 | 2016-01-29 |  |  |  |  |  |  |  | 叶亮 | 40h |  |
| 254 | 1.3.1.4 | D&D Panel Clip to Premiere Project Bin | manual | 5d | 2016-02-01 | 2016-02-05 | 253 |  |  |  |  |  |  | 叶亮 | 40h |  |
| 255 | 1.3.1.5 | D&D Panel Clip to TL，D&D Scene mark to TL | manual | 5d | 2016-02-08 | 2016-02-12 | 254 |  |  |  |  |  |  | 叶亮 | 40h |  |
| 256 | 1.3.1.6 | Play unimported clip | manual | 5d | 2016-02-15 | 2016-02-19 | 255 |  |  |  |  |  |  | 叶亮 | 40h |  |
| 257 | 1.3.1.7 | 调研播放分段视频(如果流媒体不分段，不做此功能) | manual | 3d | 2016-04-25 | 2016-04-27 | 256 |  |  |  |  |  |  | 叶亮 | 24h |  |
| 258 | 1.3.2 | 用户登录 |  | 3d | 2016-04-28 | 2016-05-02 | 257 |  |  |  | -43d | 0d | finish no earlier than 2016-02-05 | 叶亮 | 24h |  |
| 259 | 1.3.3 | **协议转换** |  | 5d | 2015-09-11 | 2015-09-17 |  |  | 5d | 2016-03-03 |  |  |  |  | 40h |  |
| 260 | 1.3.3.1 | JOVE转FCP | manual | 5d | 2016-03-03 | 2016-03-09 | 258 |  |  |  |  |  |  | 叶亮 | 40h |  |

Notes:
- 238: F
- 239: F
- 240: F
- 241: F

| ID | WBS | Task | Type | Duration | Start | Finish | Predecessors | Complete | Remaining | Actual start | Actual finish | Total slack | Free slack | Resources | Work | Actual work |
| --- | --- | --- | --- | --- | --- | --- | --- | --- | --- | --- | --- | --- | --- | --- | --- | --- |
| 261 | 1.3.4 | **CM素材显示** |  | 5d | 2015-09-11 | 2015-09-17 |  |  | 5d | 2016-03-10 |  |  |  |  | 80h |  |
| 262 | 1.3.4.1 | 左侧树 | manual | 3d | 2016-03-10 | 2016-03-14 | 260 |  |  |  |  |  |  | 叶亮 | 24h |  |
| 263 | 1.3.4.2 | 右侧内容区 | manual | 2d | 2016-03-15 | 2016-03-16 | 262 |  |  |  |  |  |  | 叶亮 | 16h |  |
| 264 | 1.3.4.3 | 测试 | manual | 5d | 2016-03-10 | 2016-03-16 |  |  |  |  |  |  |  | 贾晶晶 | 40h |  |
| 265 | 1.3.5 | **搜索功能** |  | 58d | 2015-09-11 A | 2015-12-01 |  | 31% | 40.15d |  |  |  |  |  | 104h | 32h |
| 266 | 1.3.5.1 | 高级搜索 | manual | 4d | 2016-03-17 | 2016-03-22 | 263 |  |  |  |  |  |  | 叶亮 | 32h |  |
| 267 | 1.3.5.2 | 全文搜索 | manual | 3d | 2016-03-23 | 2016-03-25 | 266 |  |  |  |  |  |  | 叶亮 | 24h |  |
| 268 | 1.3.5.3 | **记住布尔检索输入值** |  | 2d | 2015-09-11 | 2015-09-14 |  | 100% |  | 2016-05-31 | 2016-06-01 |  |  |  | 16h | 16h |
| 269 | 1.3.5.3.1 | 界面实现 | manual | 1d | 2016-05-31 A | 2016-05-31 A | 325 | 100% |  |  |  |  |  | 叶亮 | 8h | 8h |
| 270 | 1.3.5.3.2 | 接口实现 | manual | 1d | 2016-06-01 A | 2016-06-01 A | 269 | 100% |  |  |  |  |  | 叶亮 | 8h | 8h |
| 271 | 1.3.5.4 | **记住过滤条件设置** |  | 2d | 2015-09-11 | 2015-09-14 |  | 67% | 0.67d | 2016-06-02 |  |  |  |  | 24h | 16h |
| 272 | 1.3.5.4.1 | 界面实现 | manual | 1d | 2016-06-02 A | 2016-06-02 A | 270 | 100% |  |  |  |  |  | 叶亮 | 8h | 8h |
| 273 | 1.3.5.4.2 | 接口实现 | manual | 1d | 2016-06-03 A | 2016-06-03 A | 272 | 100% |  |  |  |  |  | 叶亮 | 8h | 8h |
| 274 | 1.3.5.4.3 | marker search | manual | 1d | 2016-06-06 | 2016-06-15 | 273 |  |  |  |  |  |  | 叶亮 | 8h |  |
| 275 | 1.3.5.5 | 在search result节点中展示检索结果 | manual | 1d | 2016-06-07 | 2016-06-14 | 274 |  |  |  |  |  |  | 叶亮 | 8h |  |
| 276 | 1.3.6 | **素材预览** |  | 18d? | 2015-09-11 | 2015-10-06 | 267 |  | 18d? | 2016-01-11 |  |  |  |  | 16h |  |
| 277 | 1.3.6.1 | 调用Premiere窗口预览（需预研后，取其一 ）不用这种方式 | manual | 1d | 2016-01-11 A | 2016-01-11 |  |  | 1d |  |  |  |  | 叶亮 | 8h |  |
| 278 | 1.3.6.2 | Panel中预览（需预研后，取其一） | manual | 1d | 2016-05-03 | 2016-05-03 | 267 |  |  |  |  |  |  | 叶亮 | 8h |  |
| 279 | 1.3.7 | **Import** |  | 30d | 2015-09-11 | 2015-10-22 |  |  |  |  |  |  |  |  | 24h |  |
| 280 | 1.3.7.1 | Import（按钮） | milestone | 0d | 2016-03-25 | 2016-03-25 | 263, 267 |  |  |  |  | -110d | 0d | 叶亮 |  |  |
| 281 | 1.3.7.2 | Import（拖拽） |  | 3d | 2016-05-04 | 2016-05-06 | 278 |  |  |  |  | -140d | 0d | 叶亮 | 24h |  |
| 282 | 1.3.8 | **Render and Export** |  | 4d | 2015-09-11 | 2015-09-16 |  |  | 4d | 2016-04-05 |  |  |  |  | 32h |  |
| 283 | 1.3.8.1 | 生成媒体文件 | manual | 2d | 2016-04-05 | 2016-04-06 | 281 |  |  |  |  |  |  | 叶亮 | 16h |  |
| 284 | 1.3.8.2 | 入库到CM | manual | 2d | 2016-04-07 | 2016-04-08 | 283 |  |  |  |  |  |  | 叶亮 | 16h |  |

| ID | WBS | Task | Type | Duration | Start | Finish | Predecessors | Complete | Remaining | Actual start | Resources | Work | Actual work |
| --- | --- | --- | --- | --- | --- | --- | --- | --- | --- | --- | --- | --- | --- |
| 285 | 1.3.9 | **Task Monitor** |  | 34d? | 2016-01-11 | 2016-02-25 |  |  | 34d? | 2015-05-18 |  | 56h |  |
| 286 | 1.3.9.1 | 注册到ML入task monitor及进度计算 | manual | 3d | 2016-08-15 | 2016-08-17 | 307 |  |  |  | 叶亮1 | 24h |  |
| 287 | 1.3.9.2 | 注册到OA入task monitor及进度计算 | manual | 3d | 2016-08-17 | 2016-08-19 | 286 |  |  |  | 叶亮1 | 24h |  |
| 288 | 1.3.9.3 | 测试 | manual | 1d | 2016-01-11 | 2016-01-11 |  |  |  |  | 贾晶晶 | 8h |  |
| 289 | 1.3.9.4 | User Capacity Monitor | manual | 3d | 2015-05-18 | 2015-05-20 |  |  |  |  |  |  |  |
| 290 | 1.3.10 | **已明确任务** |  | 51d? | 2015-09-11 A | 2015-11-20 |  | 11% | 45.49d? |  |  | 272h | 24h |
| 291 | 1.3.10.1 | 弹出提示框完善（加判断逻辑） | manual | 2d | 2016-08-05 | 2016-08-08 | 287 |  |  |  | 叶亮1 | 16h |  |
| 292 | 1.3.10.2 | 记住密码（需改造，现在是以明文存在本地配置文件，考虑安全性） | manual | 1d | 2016-08-09 | 2016-08-09 | 291 |  |  |  | 叶亮1 | 8h |  |
| 293 | 1.3.10.3 | 登出（需改造，现在未调用CMAPI接口，判断有任务的时候不能登出） | manual | 2d | 2016-05-26 | 2016-05-27 |  |  |  |  | 叶亮 | 16h |  |
| 294 | 1.3.10.4 | 列表模式 | manual | 2d | 2016-05-23 | 2016-05-24 A |  | 100% |  |  | 叶亮 | 16h | 16h |
| 295 | 1.3.10.5 | 排序 | manual | 1d | 2016-05-20 | 2016-05-20 |  |  |  |  | 叶亮 | 8h |  |
| 296 | 1.3.10.6 | 素材预览，没有生成低质量，判断弹出提示框（需要CM支持） | manual | 1d | 2016-06-03 A | 2016-06-03 A |  | 100% |  |  |  |  |  |
| 297 | 1.3.10.7 | 并发合成任务（逻辑较复杂，需要第三方支持） | manual | 2d | 2016-06-06 | 2016-06-07 | 321 |  |  |  | 叶亮 | 8h |  |
| 298 | 1.3.10.8 | 元素据编辑以及注册到OA添加校验 | manual | 1d | 2016-05-25 | 2016-05-25 A |  | 100% |  |  | 叶亮 | 8h | 8h |
| 299 | 1.3.10.9 | 拖拽素材到project bin，素材显示CM名称_DROP | manual | 1d | 2016-06-06 | 2016-06-06 |  |  |  |  |  |  |  |
| 300 | 1.3.10.10 | 素材长度获取 | manual | 2d | 2015-09-11 | 2015-09-14 |  |  |  |  | 王富贵 | 16h |  |
| 301 | 1.3.10.11 | 注册到Rundown | manual | 1d | 2016-06-07 | 2016-06-07 | 328 |  |  |  | 叶亮 | 8h |  |
| 302 | 1.3.10.12 | **继承marker点以及comment** |  | 3d | 2015-09-11 | 2015-09-15 |  |  |  |  |  | 32h |  |
| 303 | 1.3.10.12.1 | Inherit and display Sonaps Clip Marks in Premiere Source Viewer | manual | 2d | 2016-06-28 | 2016-06-29 |  |  |  |  | 叶亮 | 16h |  |
| 304 | 1.3.10.12.2 | Inherit and display Storyboard Marks in Premiere Sequence | manual | 0.5d | 2016-06-28 | 2016-06-28 | 303 |  |  |  | 叶亮 | 4h |  |
| 305 | 1.3.10.12.3 | Inherit and display logging markers in Premiere Sequence | manual | 0.5d | 2016-06-29 | 2016-06-29 | 304 |  |  |  | 叶亮 | 4h |  |
| 306 | 1.3.10.12.4 | 继承JOVE的marker以及comment | manual | 1d | 2016-06-28 | 2016-06-28 | 305 |  |  |  | 叶亮 | 8h |  |
| 307 | 1.3.10.13 | 支持Mac环境下premiere插件（插件安装方式需预研） | manual | 6d | 2016-07-27 | 2016-08-03 | 318 |  |  |  | 叶亮1 | 48h |  |
| 308 | 1.3.10.14 | **安全访问（UNC）** |  | 1d? | 2015-09-11 | 2015-09-11 |  |  |  |  |  | 16h |  |
| 309 | 1.3.10.14.1 | CMAPI存fcpxml路径修改 | manual | 1d | 2016-06-21 | 2016-06-21 | 311 |  |  |  | 叶亮 | 8h |  |
| 310 | 1.3.10.14.2 | 生成fcpxml文件路径修改 | manual | 1d | 2016-06-22 | 2016-06-22 | 309 |  |  |  | 叶亮 | 8h |  |
| 311 | 1.3.10.15 | Users with rights can view and use clips, same clips accessing control as Web CM（找聂家刚讨论） | milestone, manual | 0d | 2016-06-21 | 2016-06-21 | 297 |  |  |  | 叶亮 |  |  |
| 312 | 1.3.10.16 | 设置默认时，导出素材在CM中的逻辑路径（Destination)控件 | manual | 3d | 2016-06-23 | 2016-06-27 | 310 |  |  |  | 叶亮 | 24h |  |

Notes:
- 286: F
- 287: F
- 288: F
- 292: F
- 301: F

| ID | WBS | Task | Type | Duration | Start | Finish | Predecessors | Complete | Remaining | Actual start | Total slack | Constraint | Resources | Work | Actual work |
| --- | --- | --- | --- | --- | --- | --- | --- | --- | --- | --- | --- | --- | --- | --- | --- |
| 313 | 1.3.10.17 | **音频import到premiere** |  | 1d? | 2015-09-11 | 2015-09-11 |  |  |  |  |  |  |  | 24h |  |
| 314 | 1.3.10.17.1 | 调研 | manual | 2d | 2016-06-16 | 2016-06-17 | 301 |  |  |  |  |  | 叶亮 | 16h |  |
| 315 | 1.3.10.17.2 | 实现 | manual | 1d | 2016-06-18 | 2016-06-18 | 314 |  |  |  |  |  | 叶亮 | 8h |  |
| 316 | 1.3.10.18 | **图片素材import到premiere** |  | 1d? | 2015-09-11 | 2015-09-11 |  |  |  |  |  |  |  | 24h |  |
| 317 | 1.3.10.18.1 | 调研 | manual | 2d | 2016-06-19 | 2016-06-20 | 315 |  |  |  |  |  | 叶亮 | 16h |  |
| 318 | 1.3.10.18.2 | 实现 | manual | 1d | 2016-06-28 | 2016-06-28 |  |  |  |  |  |  | 叶亮 | 8h |  |
| 319 | 1.3.11 | **自动刷新** |  | 1d? | 2015-09-11 | 2015-09-11 |  |  |  |  |  |  |  | 40h |  |
| 320 | 1.3.11.1 | 左侧树 | manual | 2d | 2016-06-07 | 2016-06-08 | 275 |  |  |  |  |  | 叶亮 | 24h |  |
| 321 | 1.3.11.2 | 右侧树 | manual | 2d | 2016-06-13 | 2016-06-14 |  |  |  |  |  |  | 叶亮 | 16h |  |
| 322 | 1.3.12 | **登录权限控制** |  | 1d? | 2015-09-11 | 2015-09-11 |  |  |  |  |  |  |  | 24h |  |
| 323 | 1.3.12.1 | 判断license是否可用 | manual | 1d | 2016-06-20 | 2016-06-20 |  |  |  |  |  |  | 叶亮 | 8h |  |
| 324 | 1.3.12.2 | 判断用户权限，是否具备Premiere权限 | manual | 1d | 2016-06-20 | 2016-06-20 | 323 |  |  |  |  |  | 叶亮 | 8h |  |
| 325 | 1.3.12.3 | 关闭插件或者PREMIER，有45秒的缓冲时间。偌45秒内不再打开插件，则自动登出（调心跳接口） | manual | 1d | 2016-05-30 | 2016-05-30 |  |  |  |  |  |  | 叶亮 | 8h |  |
| 326 | 1.3.13 | **待确认任务** |  | 301d? | 2015-09-11 | 2016-11-07 |  |  | 301d? | 2015-05-20 |  |  |  | 24h |  |
| 327 | 1.3.13.1 | 入库前先判断文件大小（PDT正在确认） | manual | 1d | 2016-06-30 | 2016-06-30 | 324 |  |  |  |  |  | 叶亮 | 8h |  |
| 328 | 1.3.13.2 | 拖拽多素材和edl（需要技术预研） | manual | 2d | 2016-06-13 | 2016-06-14 | 327 |  |  |  |  |  | 叶亮 | 16h |  |
| 329 | 1.3.13.3 | User Capacity Monitor（待PDT确认） | manual | 2d | 2015-05-20 | 2015-05-21 | 304 |  |  |  |  |  |  |  |  |
| 330 | 1.4 | **MOS（胡真瑞）** |  | 225d? | 2015-09-11 A | 2016-07-22 |  | 75% | 55.38d? |  | 0d |  |  | 1288h | 1032h |
| 331 | 1.4.1 | **PLANNING处理** |  | 41d | 2016-04-01 A | 2016-05-27 |  | 57% | 17.57d |  | 0d |  |  | 272h | 152h |
| 332 | 1.4.1.1 | 创建PLANNING |  | 2d | 2016-04-01 A | 2016-04-04 A |  | 100% |  |  |  | start no earlier than 2016-04-01 | 胡真瑞 | 16h | 16h |
| 333 | 1.4.1.2 | 更新PLANNING |  | 2d | 2016-04-05 A | 2016-04-06 A | 332 | 100% |  |  |  |  | 胡真瑞 | 16h | 16h |
| 334 | 1.4.1.3 | 删除PLANNING |  | 2d | 2016-04-07 A | 2016-04-08 A | 333 | 100% |  |  |  | start no earlier than 2016-02-16 | 胡真瑞 | 16h | 16h |
| 335 | 1.4.1.4 | 获取PLANING数量 |  | 2d | 2016-04-11 A | 2016-04-12 A | 334 | 100% |  |  |  |  | 胡真瑞 | 16h | 16h |
| 336 | 1.4.1.5 | 获取PLANNING集合 |  | 2d | 2016-04-13 A | 2016-04-14 A | 335 | 100% |  |  |  | start no earlier than 2016-02-02 | 胡真瑞 | 16h | 16h |
| 337 | 1.4.1.6 | 获取PLANNING元数据 |  | 2d | 2016-04-15 A | 2016-04-18 A | 336 | 100% |  |  |  |  | 胡真瑞 | 16h | 16h |
| 338 | 1.4.1.7 | PLANNING通知消息处理 | manual | 2d | 2016-05-16 A | 2016-05-19 A |  | 100% |  |  |  |  | 胡真瑞 | 16h | 16h |
| 339 | 1.4.1.8 | 获取PLANNING对应的素材数量 | manual | 1d | 2016-05-20 A | 2016-05-20 A |  | 100% |  |  |  |  |  |  |  |
| 340 | 1.4.1.9 | 联调 | manual | 5d | 2016-05-03 A | 2016-05-11 A |  | 100% |  |  |  |  | 胡真瑞 | 40h | 40h |
| 341 | 1.4.1.10 | PLANNING测试 | manual | 15d | 2016-05-06 | 2016-05-27 |  |  |  |  |  |  | 胡学涛 | 120h |  |

Notes:
- 314: F
- 315: F
- 317: F

| ID | WBS | Task | Type | Duration | Start | Finish | Predecessors | Complete | Remaining | Total slack | Constraint | Resources | Work | Actual work |
| --- | --- | --- | --- | --- | --- | --- | --- | --- | --- | --- | --- | --- | --- | --- |
| 342 | 1.4.2 | **素材处理** |  | 73d? | 2016-02-18 A | 2016-05-30 |  | 98% | 1.55d? | 0d |  |  | 264h | 264h |
| 343 | 1.4.2.1 | 根据系统ID获取素材数量 |  | 2d | 2016-02-18 A | 2016-02-19 A |  | 100% |  |  | start no earlier than 2016-02-18 | 胡真瑞 | 16h | 16h |
| 344 | 1.4.2.2 | 根据系统ID获取素材集合 |  | 2d | 2016-02-22 A | 2016-02-23 A | 343 | 100% |  |  |  | 胡真瑞 | 16h | 16h |
| 345 | 1.4.2.3 | 获取素材元数据 |  | 2d | 2016-02-24 A | 2016-02-25 A | 344 | 100% |  |  |  | 胡真瑞 | 16h | 16h |
| 346 | 1.4.2.4 | 创建素材 |  | 2d | 2016-02-26 A | 2016-02-29 A | 345 | 100% |  |  |  | 胡真瑞 | 16h | 16h |
| 347 | 1.4.2.5 | 更新素材 |  | 2d | 2016-05-16 A | 2016-05-17 A |  | 100% |  |  | start no earlier than 2016-05-16 | 胡真瑞 | 16h | 16h |
| 348 | 1.4.2.6 | 删除素材 |  | 2d | 2016-05-18 A | 2016-05-19 A | 347 | 100% |  |  |  | 胡真瑞 | 16h | 16h |
| 349 | 1.4.2.7 | 重定向素材 |  | 2d | 2016-05-20 A | 2016-05-23 A | 348 | 100% |  |  | start no earlier than 2016-05-18 | 胡真瑞 | 16h | 16h |
| 350 | 1.4.2.8 | 根据用户ID获取用户名 |  | 2d | 2016-05-24 A | 2016-05-25 A | 349 | 100% |  |  |  | 胡真瑞 | 16h | 16h |
| 351 | 1.4.2.9 | 根据目录ID获取目录 |  | 1d | 2016-05-26 A | 2016-05-26 A | 350 | 100% |  |  | finish no earlier than 2016-03-23 | 胡真瑞 | 8h | 8h |
| 352 | 1.4.2.10 | 获取素材的MOSID |  | 2d | 2016-05-27 A | 2016-05-30 A | 351 | 100% |  |  |  | 胡真瑞 | 16h | 16h |
| 353 | 1.4.2.11 | 素材流程测试 | manual | 10d | 2016-04-01 A | 2016-04-14 A |  | 100% |  |  |  | 胡学涛 | 80h | 80h |
| 354 | 1.4.2.12 | 通知消息处理 | manual | 4d | 2016-05-03 A | 2016-05-06 A |  | 100% |  |  |  | 胡真瑞 | 32h | 32h |
| 355 | 1.4.2.13 | 联调 | manual | 10d | 2016-02-18 A | 2016-03-02 A |  | 100% |  |  |  |  |  |  |
| 356 | 1.4.2.14 | OA素材通知 | manual | 3d | 2016-02-18 A | 2016-02-22 A |  | 100% |  |  |  |  |  |  |
| 357 | 1.4.2.15 | 测试 | manual | 1d? | 2016-02-18 | 2016-02-18 |  |  |  |  |  |  |  |  |
| 358 | 1.4.3 | **PL模块** |  | 39d | 2016-03-07 A | 2016-04-28 A |  | 100% |  |  |  |  | 224h | 224h |
| 359 | 1.4.3.1 | MQ消息发送接收 |  | 5d | 2016-03-07 A | 2016-03-11 A |  | 100% |  |  | start no earlier than 2016-03-07 | 胡真瑞 | 40h | 40h |
| 360 | 1.4.3.2 | PT元数据获取 |  | 5d | 2016-03-14 A | 2016-03-18 A | 359 | 100% |  |  |  | 胡真瑞 | 40h | 40h |
| 361 | 1.4.3.3 | **PNS消息通知** |  | 29d | 2016-03-21 A | 2016-04-28 A |  | 100% |  |  |  |  | 144h | 144h |
| 362 | 1.4.3.3.1 | 505/510/5012 |  | 5d | 2016-03-21 A | 2016-03-25 A | 360 | 100% |  |  |  | 胡真瑞 | 40h | 40h |
| 363 | 1.4.3.3.2 | 5013/5014/5015/5016/5032/5040/5041/5064 |  | 3d | 2016-03-21 A | 2016-03-23 A | 360 | 100% |  |  |  | 胡真瑞 | 24h | 24h |
| 364 | 1.4.3.3.3 | PT流程测试 |  | 10d | 2016-04-15 A | 2016-04-28 A | 353 | 100% |  |  |  | 胡学涛 | 80h | 80h |
| 365 | 1.4.3.3.4 | 联调 | manual | 1d | 2016-03-21 A | 2016-03-21 A |  | 100% |  |  |  |  |  |  |

| ID | WBS | Task | Type | Duration | Start | Finish | Predecessors | Complete | Remaining | Constraint | Resources | Work | Actual work |
| --- | --- | --- | --- | --- | --- | --- | --- | --- | --- | --- | --- | --- | --- |
| 366 | 1.4.4 | **SONY交互模块** |  | 20d | 2016-01-29 A | 2016-02-25 A |  | 100% |  |  |  | 160h | 160h |
| 367 | 1.4.4.1 | 与NRCS接口(SOBEY与SONY接口) |  | 10d | 2016-01-29 A | 2016-02-11 A |  | 100% |  | start no earlier than 2016-01-29 | 王富贵 | 80h | 80h |
| 368 | 1.4.4.2 | 与S2IF接口 |  | 10d | 2016-02-12 A | 2016-02-25 A | 367 | 100% |  |  | 王富贵 | 80h | 80h |
| 369 | 1.4.4.3 | WINDOWS服务 LINUX化处理 | manual | 1d | 2016-01-29 A | 2016-01-29 A |  | 100% |  |  |  |  |  |
| 370 | 1.4.5 | **界面配置** |  | 192d | 2015-09-11 A | 2016-06-07 A |  | 100% |  |  |  | 232h | 232h |
| 371 | 1.4.5.1 | 界面（DROP） | milestone, manual | 0d | 2016-02-25 A | 2016-02-25 A | 368 | 100% |  | start no earlier than 2015-09-11 | 胡真瑞 |  |  |
| 372 | 1.4.5.2 | 注册表，DLLIMPORT |  | 15d | 2015-09-11 A | 2015-10-01 A | 371 | 100% |  |  | 王富贵 | 120h | 120h |
| 373 | 1.4.5.3 | 配置读写 |  | 4d | 2016-04-19 A | 2016-04-22 A |  | 100% |  | finish no earlier than 2016-04-22 | 胡真瑞 | 32h | 32h |
| 374 | 1.4.5.4 | Kafka调整 | manual | 2d | 2016-04-26 A | 2016-04-27 A |  | 100% |  |  | 胡真瑞 | 16h | 16h |
| 375 | 1.4.5.5 | 内存数据移到redis | manual | 3d | 2016-05-27 A | 2016-05-31 A |  | 100% |  |  | 胡真瑞 | 24h | 24h |
| 376 | 1.4.5.6 | 本地数据文件移到公共区 | manual | 2d | 2016-06-01 A | 2016-06-02 A | 375 | 100% |  |  | 胡真瑞 | 16h | 16h |
| 377 | 1.4.5.7 | PL状态通知实现ZK | manual | 3d | 2016-06-03 A | 2016-06-07 A | 376 | 100% |  |  | 胡真瑞 | 24h | 24h |
| 378 | 1.4.5.8 | ZK | manual | 1d | 2016-02-25 A | 2016-02-26 A |  | 100% |  |  |  |  |  |
| 379 | 1.4.5.9 | QUEUE FOLDER逻辑 | manual | 1d | 2016-02-25 A | 2016-02-26 A |  | 100% |  |  |  |  |  |
| 380 | 1.4.6 | **网管配置（数组配置，自定义元数据）** |  | 61d | 2015-09-11 | 2015-12-04 |  |  |  |  |  | 136h |  |
| 381 | 1.4.6.1 | 方案制定 | manual | 2d | 2016-06-27 | 2016-07-07 |  |  |  |  | 王富贵 | 16h |  |
| 382 | 1.4.6.2 | 配置向导 | manual | 5d | 2016-06-20 | 2016-06-24 |  |  |  |  | 胡真瑞 | 40h |  |
| 383 | 1.4.6.3 | 高级配置 | manual | 10d | 2016-06-27 | 2016-07-08 | 382 |  |  |  | 胡真瑞 | 80h |  |
| 384 | 1.4.6.4 | 自定义元数据双向同步_DROP | manual | 10d | 2016-07-11 | 2016-07-22 |  |  |  |  |  |  |  |
| 385 | 1.4.7 | iNEWS/ENPS/OpenMedia联调 | manual | 3d | 2015-09-11 | 2015-09-15 |  |  |  |  |  |  |  |
| 386 | 1.4.8 | 诊断工具 | manual | 1d | 2015-09-11 A | 2015-09-11 |  |  | 1d | finish no earlier than 2015-09-11 |  |  |  |

Notes:
- 382: F
- 383: F
- 384: F
- 385: F
- 386: F
